# install equipment-original

Schedule from MS Project, 2017-09-29 to 2017-12-11, costs in $, A marks actual dates.
Georgian College

## Calendars

- Standard: Mon-Fri 08:00-12:00, 13:00-17:00; Sat-Sun off.

## Resources

| Resource | Rate |
| --- | --- |
| Marc |  |
| Udayveer |  |
| Ed |  |
| Matt |  |
| Alexander Ironside | 50 |

## Schedule

| ID | WBS | Task | Type | Duration | Start | Finish | Predecessors | Complete | Remaining | Baseline start | Baseline finish | Baseline duration | Total slack | Constraint | Resources | Work | Actual work | Cost | Actual cost |
| --- | --- | --- | --- | --- | --- | --- | --- | --- | --- | --- | --- | --- | --- | --- | --- | --- | --- | --- | --- |
| 1 | 1 | **Total Project** |  | 52d | 2017-09-29 A | 2017-12-11 |  | 43% | 29.55d | 2017-09-29 | 2017-12-11 | 52d |  |  |  | 312h | 112h | 15,600 | 5,600 |
| 2 | 1.1 | Design network |  | 1w | 2017-09-29 A | 2017-10-05 A |  | 100% |  | 2017-09-29 | 2017-10-05 | 1w |  | start no earlier than 2017-09-29 |  |  |  |  |  |
| 3 | 1.2 | **order equipment** |  | 7d | 2017-10-06 A | 2017-10-16 A |  | 100% |  | 2017-10-06 | 2017-10-16 | 7d |  |  |  | 56h | 56h | 2,800 | 2,800 |
| 4 | 1.2.1 | research & order computers |  | 1d | 2017-10-06 A | 2017-10-06 A | 2 | 100% |  | 2017-10-06 | 2017-10-06 | 1d |  |  | Alexander Ironside | 8h | 8h | 400 | 400 |
| 5 | 1.2.2 | research & order firewalls |  | 2d | 2017-10-09 A | 2017-10-10 A | 4 | 100% |  | 2017-10-09 | 2017-10-10 | 2d |  |  | Alexander Ironside | 16h | 16h | 800 | 800 |
| 6 | 1.2.3 | research & order switches |  | 1d | 2017-10-11 A | 2017-10-11 A | 5 | 100% |  | 2017-10-11 | 2017-10-11 | 1d |  |  | Alexander Ironside | 8h | 8h | 400 | 400 |
| 7 | 1.2.4 | research & order servers |  | 2d | 2017-10-12 A | 2017-10-13 A | 6 | 100% |  | 2017-10-12 | 2017-10-13 | 2d |  |  | Alexander Ironside | 16h | 16h | 800 | 800 |
| 8 | 1.2.5 | research & order floor dependant items |  | 1d | 2017-10-16 A | 2017-10-16 A | 7 | 100% |  | 2017-10-16 | 2017-10-16 | 1d |  |  | Alexander Ironside | 8h | 8h | 400 | 400 |
| 9 | 1.3 | **Install equipment** |  | 22d | 2017-10-23 A | 2017-11-21 |  | 54% | 10.15d | 2017-10-16 | 2017-11-21 | 27d | 0d |  |  | 104h | 56h | 5,200 | 2,800 |
| 10 | 1.3.1 | install computers |  | 4d | 2017-10-23 A | 2017-10-26 A | 4FS+2w | 100% |  | 2017-10-16 | 2017-10-19 | 4d |  |  | Alexander Ironside | 32h | 32h | 1,600 | 1,600 |
| 11 | 1.3.2 | Install racks |  | 2d | 2017-10-31 A | 2017-11-01 A | 8FS+2w, 10 | 100% |  | 2017-10-31 | 2017-11-01 | 2d |  |  | Alexander Ironside | 16h | 16h | 800 | 800 |
| 12 | 1.3.3 | Install servers |  | 2d | 2017-11-13 A | 2017-11-14 | 7FS+4w, 11 | 50% | 1d | 2017-11-13 | 2017-11-14 | 2d | 0d |  | Alexander Ironside | 16h | 8h | 800 | 400 |
| 13 | 1.3.4 | install firewalls |  | 1d | 2017-11-15 | 2017-11-15 | 5, 12 |  |  | 2017-11-15 | 2017-11-15 | 1d | 0d |  | Alexander Ironside | 8h |  | 400 |  |
| 14 | 1.3.5 | install switches |  | 1d | 2017-11-16 | 2017-11-16 | 6FS+3w, 13 |  |  | 2017-11-16 | 2017-11-16 | 1d | 0d |  | Alexander Ironside | 8h |  | 400 |  |
| 15 | 1.3.6 | install cables |  | 3d | 2017-11-17 | 2017-11-21 | 11, 10, 13, 14, 12 |  |  | 2017-11-17 | 2017-11-21 | 3d | 0d |  | Alexander Ironside | 24h |  | 1,200 |  |
| 16 | 1.4 | **Configure equipment** |  | 28d | 2017-10-27 | 2017-12-05 |  |  |  | 2017-10-20 | 2017-12-05 | 33d | 0d |  |  | 120h |  | 6,000 |  |
| 17 | 1.4.1 | configure computers |  | 5d | 2017-10-27 | 2017-11-06 | 10 |  |  | 2017-10-20 | 2017-10-26 | 5d | 11d |  | Alexander Ironside | 40h |  | 2,000 |  |
| 18 | 1.4.2 | configure switches |  | 2d | 2017-11-22 | 2017-11-23 | 14, 15, 17 |  |  | 2017-11-22 | 2017-11-23 | 2d | 0d |  | Alexander Ironside | 16h |  | 800 |  |
| 19 | 1.4.3 | configure servers |  | 2d | 2017-11-24 | 2017-11-27 | 12, 15, 18 |  |  | 2017-11-24 | 2017-11-27 | 2d | 0d |  | Alexander Ironside | 16h |  | 800 |  |
| 20 | 1.4.4 | configure firewalls |  | 1d | 2017-11-28 | 2017-11-28 | 13, 19 |  |  | 2017-11-28 | 2017-11-28 | 1d | 0d |  | Alexander Ironside | 8h |  | 400 |  |
| 21 | 1.4.5 | Test system |  | 5d | 2017-11-29 | 2017-12-05 | 17, 18, 20 |  |  | 2017-11-29 | 2017-12-05 | 5d | 0d |  | Alexander Ironside | 40h |  | 2,000 |  |
| 22 | 1.5 | Acceptance testing |  | 3d | 2017-12-06 | 2017-12-08 | 21 |  |  | 2017-12-06 | 2017-12-08 | 3d | 0d |  | Alexander Ironside | 24h |  | 1,200 |  |
| 23 | 1.6 | system is ready for service | milestone | 0d | 2017-12-08 | 2017-12-08 | 22 |  |  | 2017-12-08 | 2017-12-08 |  | 0d |  | Alexander Ironside |  |  |  |  |
| 24 | 1.7 | Celebrate |  | 1d | 2017-12-11 | 2017-12-11 | 23 |  |  | 2017-12-11 | 2017-12-11 | 1d | 0d |  | Alexander Ironside | 8h |  | 400 |  |
